id,task,start_week,end_week,depends_on,planned_hours,deliverable,milestone,status
T01,Scope and success criteria,5,6,,14,Requirements and research questions,,planned
T02,Literature review,5,10,,32,Reading notes and literature comparison,,planned
T03,Sample audit and permissions,5,7,,18,Candidate audit and permission register,,planned
T04,Proposal and supervisor review,7,7,T01;T03,16,Proposal submitted,M1,planned
T05,Reproduce reference baseline,8,9,T04,24,Offline checks and permitted API pilot,,planned
T06,Curate corpus and build index,8,11,T03;T04,32,20-30 usable documents and index,M2,planned
T07,Author and check benchmark,9,11,T03,28,100 reviewed questions and grouped split,,planned
T08,Implement edition handling,12,13,T05;T06,24,Edition constraints and tests,,planned
T09,Implement evidence checks,13,14,T05;T06,24,Refusal and citation validation,,planned
T10,Follow-ups and integration,14,15,T08,16,Local demo and integration tests,M3,planned
T11,Development-only tuning and freeze,15,16,T07;T09;T10,16,Frozen corpus labels and configuration,,planned
T12,Controlled evaluation and analysis,17,19,T11,32,Comparison ablation and case analysis,M4,planned
T13,Report and outcome evidence,20,22,T12,36,Seven-page report draft,M5,planned
T14,Video and submission preparation,22,23,T12,12,Video and checked access link,,planned
T15,Final review and submission,23,24,T13;T14,16,Report portfolio and video submitted,M6,planned
T16,Journals reviews and supervision,5,24,,60,Weekly records and 10 Review Documents,,planned
T17,Viva preparation and defence,25,27,T15,28,Presentation and oral examination,,planned
